# 05_test

Schedule from MS Project, 2022-10-19 to 2022-11-14, status date 2022-11-02, costs in ¥, A marks actual dates.

## Calendars

- 标准: Mon-Fri 08:00-12:00, 13:30-17:30; Sat-Sun off. Exceptions (off unless hours are given): 2022-10-28 (休息), 2022-10-29 08:00-12:00, 13:30-17:30 (工作).

## Resources

| Resource | Group | Unit | Rate |
| --- | --- | --- | --- |
| 市场部 | 市场部 |  | 18.75 |
| 总经理 | 项目领导小组 |  | 56.25 |
| 项目经理 | 项目领导小组 |  | 25 |
| 工程师 | 工程部 |  | 12.5 |
| 物料部 | 物料部 |  | 12.5 |
| 采购 | 采购部 |  | 18.75 |
| 法律顾问 | 专家顾问 |  | 25 |
| 电话联络 | 办公费 | 次 | 10 |
| 打印耗材 | 办公费 | 包 | 30 |

## Schedule

| ID | WBS | Task | Type | Duration | Start | Finish | Predecessors | Complete | Remaining | Baseline start | Baseline finish | Baseline duration | Baseline 1 start | Baseline 1 finish | Total slack | Free slack | Resources | Work | Actual work | Cost | Baseline cost | Actual cost |
| --- | --- | --- | --- | --- | --- | --- | --- | --- | --- | --- | --- | --- | --- | --- | --- | --- | --- | --- | --- | --- | --- | --- |
| 1 | 1 | **确定目标** |  | 2d | 2022-10-19 A | 2022-10-20 A |  | 100% |  | 2022-10-19 | 2022-10-20 | 2d | 2022-10-19 | 2022-10-20 |  |  |  | 16h | 16h | 300 | 300 | 300 |
| 2 | 1.1 | 定义需求表 | manual | 1d | 2022-10-19 A | 2022-10-19 A |  | 100% |  | 2022-10-19 | 2022-10-19 | 1d | 2022-10-19 | 2022-10-19 |  |  | 市场部 | 8h | 8h | 150 | 150 | 150 |
| 3 | 1.2 | 定义所需服务范围 | manual | 1d | 2022-10-20 A | 2022-10-20 A | 2 | 100% |  | 2022-10-20 | 2022-10-20 | 1d | 2022-10-20 | 2022-10-20 |  |  | 市场部 | 8h | 8h | 150 | 150 | 150 |
| 4 | 2 | **征求前的过程** |  | 7d | 2022-10-21 A | 2022-11-01 A | 1 | 100% |  | 2022-10-21 | 2022-11-01 | 7d | 2022-10-21 | 2022-11-01 |  |  |  | 224h | 224h | 4,940 | 4,940 | 4,940 |
| 5 | 2.1 | 定义需求 | manual | 1d | 2022-10-21 A | 2022-10-21 A |  | 100% |  | 2022-10-21 | 2022-10-21 | 1d | 2022-10-21 | 2022-10-21 |  |  | 市场部 [400%] | 32h | 32h | 600 | 600 | 600 |
| 6 | 2.2 | 定义采购策略和计划 | manual | 1.5d | 2022-10-24 A | 2022-10-26 A | 5 | 100% |  | 2022-10-24 | 2022-10-26 | 1.5d | 2022-10-24 | 2022-10-26 |  |  | 采购; 项目经理 | 32h | 32h | 700 | 700 | 700 |
| 7 | 2.3 | 市场调研 | manual | 1d | 2022-10-25 A | 2022-10-25 A | 6 | 100% |  | 2022-10-25 | 2022-10-25 | 1d | 2022-10-25 | 2022-10-25 |  |  | 市场部 [400%]; 打印耗材 [10 包] | 32h | 32h | 900 | 900 | 900 |
| 8 | 2.4 | **资源选择计划和策略** |  | 1.5d | 2022-10-24 A | 2022-10-25 A | 5 | 100% |  | 2022-10-24 | 2022-10-25 | 1.5d | 2022-10-24 | 2022-10-25 |  |  |  | 16h | 16h | 350 | 350 | 350 |
| 9 | 2.4.1 | 选择评委会成员 | manual | 1d | 2022-10-24 A | 2022-10-25 A |  | 100% |  | 2022-10-24 | 2022-10-25 | 1d | 2022-10-24 | 2022-10-25 |  |  | 项目经理; 物料部; 电话联络 [10 次] | 8h | 8h | 250 | 250 | 250 |
| 10 | 2.4.2 | 制定评估标准（记分卡） | manual | 0.5d | 2022-10-24 A | 2022-10-24 A | 9 | 100% |  | 2022-10-24 | 2022-10-24 | 0.5d | 2022-10-24 | 2022-10-24 |  |  | 物料部 [200%] | 8h | 8h | 100 | 100 | 100 |
| 11 | 2.4.3 | 完成资源选择计划 | milestone, manual | 0d | 2022-10-25 A | 2022-10-25 A | 10 | 100% |  | 2022-10-25 | 2022-10-25 | 0d | 2022-10-25 | 2022-10-25 |  |  |  |  |  |  |  |  |
| 12 | 2.5 | 起草 RFP | manual | 3d | 2022-10-26 A | 2022-10-29 A | 7, 8 | 100% |  | 2022-10-26 | 2022-10-29 | 3d | 2022-10-26 | 2022-10-29 |  |  | 市场部 [400%] | 96h | 96h | 1,800 | 1,800 | 1,800 |
| 13 | 2.6 | 最终确定 RFP |  | 1d | 2022-10-31 A | 2022-10-31 A | 12 | 100% |  | 2022-10-31 | 2022-10-31 | 1d | 2022-10-31 | 2022-10-31 |  |  | 市场部; 项目经理; 打印耗材 [8 包] | 16h | 16h | 590 | 590 | 590 |
| 14 | 2.7 | 发布 RFP | milestone, manual | 0d | 2022-11-01 A | 2022-11-01 A | 13 | 100% |  | 2022-11-01 | 2022-11-01 | 0d | 2022-11-01 | 2022-11-01 |  |  | 项目经理 |  |  |  |  |  |
| 15 | 3 | **征求后的过程** |  | 10d | 2022-11-01 A | 2022-11-14 | 4 | 15% | 8.51d | 2022-11-01 | 2022-11-14 | 10d | 2022-11-01 | 2022-11-14 | 0d |  |  | 360h | 62h | 7,100 | 5,300 | 1,162.5 |
| 16 | 3.1 | 接收口头和书面建议书 | manual | 8d | 2022-11-01 A | 2022-11-10 |  | 24% | 6.06d | 2022-11-01 | 2022-11-07 | 5d | 2022-11-01 | 2022-11-10 |  |  | 市场部 [400%] | 256h | 62h | 4,800 | 3,000 | 1,162.5 |
| 17 | 3.2 | 评估建议书 | manual | 1d | 2022-11-11 | 2022-11-11 | 16 |  |  | 2022-11-08 | 2022-11-08 | 1d | 2022-11-11 | 2022-11-11 |  |  | 市场部 [400%] | 32h |  | 600 | 600 |  |
| 18 | 3.3 | 确定具有竞争力的投标商 |  | 1d | 2022-11-14 | 2022-11-14 | 17 |  |  | 2022-11-09 | 2022-11-09 | 1d | 2022-11-14 | 2022-11-14 | -3d | 0d | 采购 [200%]; 项目经理; 物料部; 市场部 | 40h |  | 750 | 750 |  |
| 19 | 3.4 | 接收和分析最终的建议书 | manual | 1d | 2022-11-14 | 2022-11-14 | 18 |  |  | 2022-11-10 | 2022-11-10 | 1d | 2022-11-14 | 2022-11-14 |  |  | 市场部 [200%] | 16h |  | 300 | 300 |  |
| 20 | 3.5 | 进行法律审查 | manual | 1d | 2022-11-11 | 2022-11-11 | 19 |  |  | 2022-11-11 | 2022-11-11 | 1d | 2022-11-11 | 2022-11-11 |  |  | 法律顾问 | 8h |  | 200 | 200 |  |
| 21 | 3.6 | 签定合同（分发） | manual | 1d | 2022-11-14 | 2022-11-14 | 20 |  |  | 2022-11-14 | 2022-11-14 | 1d | 2022-11-14 | 2022-11-14 |  |  | 总经理 | 8h |  | 450 | 450 |  |

Notes:
- 9: 选择的人员起码应熟悉 RFP 中列出的服务。他们应具备足够的知识、技能和经验，能够对建议书进行公平合理的评估。
