# 08_test

Schedule from MS Project, 2022-11-01 to 2026-06-23, costs in ￥, A marks actual dates.

## Calendars

- 标准: Mon-Fri 08:00-12:00, 13:00-17:00; Sat-Sun off.

## Resources

| Resource | Rate |
| --- | --- |
| 管理人员 | 10 |
| 产品工程设计人员 | 10 |
| 法律人员 | 20 |
| 市场人员 | 10 |
| 项目经理 | 30 |
| 加工工程师 | 10 |
| 制造工程师 | 10 |
| 安全人员 | 10 |
| 会计 | 10 |
| 用户 |  |
| 采购人员 | 10 |

## Schedule

| ID | WBS | Task | Type | Duration | Start | Finish | Predecessors | Complete | Remaining | Baseline start | Baseline finish | Baseline duration | Total slack | Resources | Work | Actual work | Cost | Baseline cost | Actual cost |
| --- | --- | --- | --- | --- | --- | --- | --- | --- | --- | --- | --- | --- | --- | --- | --- | --- | --- | --- | --- |
| 1 | 1 | **新产品开发模板** |  | 950.25d | 2022-11-01 A | 2026-06-23 |  |  | 945.79d | 2022-11-01 | 2026-06-23 | 950.25d | 0d |  | 14276h | 52h | 189,311 | 189,520 | 311 |
| 2 | 1.1 | **新产品的初步筛选阶段** |  | 8.5d | 2022-11-01 A | 2022-11-11 |  | 71% | 2.5d | 2022-11-01 | 2022-11-10 | 8d | 941.75d |  | 76h | 52h | 591 | 800 | 311 |
| 3 | 1.1.1 | 确定新产品的市场机会 | milestone | 0d | 2022-11-01 | 2022-11-01 |  |  |  | 2022-11-01 | 2022-11-01 | 0d | 950.25d | 管理人员; 产品工程设计人员 |  |  | 31 |  | 31 |
| 4 | 1.1.2 | 说明新产品设想(一页书面形式的披露材料) |  | 2d | 2022-11-01 A | 2022-11-02 A | 3 | 100% |  | 2022-11-01 | 2022-11-02 | 2d |  | 产品工程设计人员 | 16h | 16h |  | 160 |  |
| 5 | 1.1.3 | 为进行可行性决策搜集信息 |  | 5d | 2022-11-03 A | 2022-11-09 | 4 | 50% | 2.5d | 2022-11-03 | 2022-11-09 | 5d | 943.25d | 产品工程设计人员 | 48h | 24h | 560 | 560 | 280 |
| 6 | 1.1.4 | 召开筛选委员会会议(决策是否采纳设想) |  | 1.5d | 2022-11-10 A | 2022-11-11 A | 5 | 100% |  | 2022-11-10 | 2022-11-10 | 1d |  | 产品工程设计人员 | 12h | 12h |  | 80 |  |
| 7 | 1.1.5 | 决策点: 是否进行初步研究 | milestone | 0d | 2022-11-11 | 2022-11-11 | 6 |  |  | 2022-11-10 | 2022-11-10 | 0d | 0d | 管理人员; 产品工程设计人员 |  |  |  |  |  |
| 8 | 1.2 | **初步研究阶段** |  | 62.5d | 2022-11-11 | 2023-02-07 |  |  |  | 2022-11-11 | 2023-02-07 | 63d | 0d |  | 1188h |  | 17,000 | 17,000 |  |
| 9 | 1.2.1 | 分配进行初步调查的资源 |  | 1d | 2022-11-11 | 2022-11-14 | 7 |  |  | 2022-11-11 | 2022-11-11 | 1d | 0d | 管理人员 | 8h |  | 80 | 80 |  |
| 10 | 1.2.2 | 制定初步研究计划 |  | 5d | 2022-11-14 | 2022-11-21 | 9 |  |  | 2022-11-14 | 2022-11-18 | 5d | 935.75d | 产品工程设计人员; 项目经理 | 80h |  | 1,600 | 1,600 |  |
| 11 | 1.2.3 | 对市场进行评估 |  | 10d | 2022-11-14 | 2022-12-02 | 9 |  |  | 2022-11-21 | 2022-12-02 | 10d | 926.25d | 市场人员 | 80h |  | 800 | 800 |  |
| 12 | 1.2.4 | 分析竞争情况 |  | 5d | 2022-11-14 | 2022-11-21 | 9 |  |  | 2022-11-14 | 2022-11-18 | 5d | 0d | 市场人员 | 40h |  | 400 | 400 |  |
| 13 | 1.2.5 | **技术可行性分析** |  | 20d | 2022-11-21 | 2022-12-19 |  |  |  | 2022-11-21 | 2022-12-16 | 20d | 0d |  | 160h |  | 1,600 | 1,600 |  |
| 14 | 1.2.5.1 | 生产实验室规模的产品 |  | 10d | 2022-11-21 | 2022-12-05 | 12 |  |  | 2022-11-21 | 2022-12-02 | 10d | 0d | 产品工程设计人员 | 80h |  | 800 | 800 |  |
| 15 | 1.2.5.2 | 评估内部产品 |  | 5d | 2022-12-05 | 2022-12-12 | 14 |  |  | 2022-12-05 | 2022-12-09 | 5d | 0d | 产品工程设计人员 | 40h |  | 400 | 400 |  |
| 16 | 1.2.5.3 | 确定生产所需的加工过程 |  | 5d | 2022-12-12 | 2022-12-19 | 15 |  |  | 2022-12-12 | 2022-12-16 | 5d | 0d | 加工工程师 | 40h |  | 400 | 400 |  |
| 17 | 1.2.6 | 评估生产能力 |  | 10d | 2022-12-19 | 2023-01-02 | 16 |  |  | 2022-12-19 | 2022-12-30 | 10d | 0d | 产品工程设计人员; 制造工程师 | 160h |  | 1,600 | 1,600 |  |
| 18 | 1.2.7 | 确定安全因素 |  | 10d | 2022-12-19 | 2023-01-02 | 17SS |  |  | 2022-12-19 | 2022-12-30 | 10d | 0d | 安全人员 | 80h |  | 800 | 800 |  |
| 19 | 1.2.8 | 确定环境因素 |  | 19.5d | 2022-12-19 | 2023-01-13 | 18SS |  |  | 2022-12-19 | 2023-01-13 | 20d | 0d | 产品工程设计人员; 法律人员 | 160h |  | 2,400 | 2,400 |  |
| 20 | 1.2.9 | 检查法律问题 |  | 19.5d | 2022-12-19 | 2023-01-13 | 19SS |  |  | 2022-12-19 | 2023-01-13 | 20d | 0d | 法律人员; 项目经理 | 160h |  | 4,000 | 4,000 |  |
| 21 | 1.2.10 | 进行财务评估 |  | 10d | 2023-01-16 | 2023-01-27 | 20, 17, 18, 19 |  |  | 2023-01-16 | 2023-01-27 | 10d | 0d | 会计 | 80h |  | 800 | 800 |  |
| 22 | 1.2.11 | 进行风险分析 |  | 5d | 2023-01-30 | 2023-02-03 | 21 |  |  | 2023-01-30 | 2023-02-03 | 5d | 0d | 产品工程设计人员; 项目经理 | 80h |  | 1,600 | 1,600 |  |
| 23 | 1.2.12 | 起草初步开发阶段计划 |  | 10d | 2023-01-16 | 2023-01-27 | 21SS |  |  | 2023-01-16 | 2023-01-27 | 10d | 5d | 产品工程设计人员 | 80h |  | 800 | 800 |  |
| 24 | 1.2.13 | 做出初步研究阶段的决策 |  | 2d | 2023-02-06 | 2023-02-07 | 22, 23 |  |  | 2023-02-06 | 2023-02-07 | 2d | 0d | 管理人员; 产品工程设计人员; 项目经理 | 20h |  | 520 | 520 |  |
| 25 | 1.2.14 | 决策点: 是否进入开发阶段 | milestone | 0d | 2023-02-07 | 2023-02-07 | 24 |  |  | 2023-02-07 | 2023-02-07 | 0d | 879.25d | 管理人员; 项目经理 |  |  |  |  |  |

| ID | WBS | Task | Type | Duration | Start | Finish | Predecessors | Baseline start | Baseline finish | Baseline duration | Total slack | Free slack | Resources | Work | Cost | Baseline cost |
| --- | --- | --- | --- | --- | --- | --- | --- | --- | --- | --- | --- | --- | --- | --- | --- | --- |
| 26 | 1.3 | **开发阶段** |  | 324.25d | 2023-02-08 | 2024-05-07 |  | 2023-02-08 | 2024-05-07 | 324.25d | 0d |  |  | 4612h | 54,520 | 54,520 |
| 27 | 1.3.1 | 为开发阶段计划分配资源 |  | 1d | 2023-02-08 | 2023-02-08 | 24 | 2023-02-08 | 2023-02-08 | 1d | 0d |  | 管理人员; 项目经理 | 16h | 320 | 320 |
| 28 | 1.3.2 | **市场评估** |  | 62d | 2023-02-09 | 2023-05-05 |  | 2023-02-09 | 2023-05-05 | 62d | 5d |  |  | 480h | 4,800 | 4,800 |
| 29 | 1.3.2.1 | 搜集市场信息 |  | 27d | 2023-02-09 | 2023-03-17 | 27 | 2023-02-09 | 2023-03-17 | 27d | 5d | 0d | 产品工程设计人员; 市场人员 | 240h | 2,400 | 2,400 |
| 30 | 1.3.2.2 | 确定并联系抽样用户群 |  | 5d | 2023-04-10 | 2023-04-14 | 29 | 2023-04-10 | 2023-04-14 | 5d | 5d | 0d | 市场人员 | 40h | 400 | 400 |
| 31 | 1.3.2.3 | 进行竞争者分析 |  | 15d | 2023-03-20 | 2023-04-07 | 29 | 2023-03-20 | 2023-04-07 | 15d | 10d | 5d | 市场人员 | 120h | 1,200 | 1,200 |
| 32 | 1.3.2.4 | 重新定义产品需求 |  | 10d | 2023-04-24 | 2023-05-05 | 30, 31 | 2023-04-24 | 2023-05-05 | 10d | 5d |  | 产品工程设计人员 | 80h | 800 | 800 |
| 33 | 1.3.3 | **产品技术评估** |  | 234d | 2023-02-09 | 2024-01-02 |  | 2023-02-09 | 2024-01-02 | 234d | 0d |  |  | 2776h | 31,000 | 31,000 |
| 34 | 1.3.3.1 | 确定产品特征(性能标准) |  | 2d | 2023-02-09 | 2023-02-10 | 27 | 2023-02-09 | 2023-02-10 | 2d | 0d |  | 产品工程设计人员 | 16h | 160 | 160 |
| 35 | 1.3.3.2 | 研究原型生产过程 |  | 10d | 2023-02-13 | 2023-02-24 | 34 | 2023-02-13 | 2023-02-24 | 10d | 0d |  | 产品工程设计人员 | 80h | 800 | 800 |
| 36 | 1.3.3.3 | 生产原型产品 |  | 25d | 2023-03-20 | 2023-04-21 | 35 | 2023-03-20 | 2023-04-21 | 25d | 0d |  | 产品工程设计人员 | 200h | 2,000 | 2,000 |
| 37 | 1.3.3.4 | 进行内部产品审查 |  | 10d | 2023-04-24 | 2023-05-12 | 36 | 2023-04-24 | 2023-05-12 | 10d | 0d |  | 管理人员; 产品工程设计人员 | 80h | 800 | 800 |
| 38 | 1.3.3.5 | 为专利申请过程建立档案 |  | 10d | 2023-10-04 | 2023-10-17 | 34 | 2023-10-04 | 2023-10-17 | 10d | 122.25d | 57d | 产品工程设计人员 | 80h | 800 | 800 |
| 39 | 1.3.3.6 | 进行市场/技术审查 |  | 92d | 2023-05-15 | 2023-09-19 | 37, 32 | 2023-05-15 | 2023-09-19 | 92d | 0d |  | 市场人员; 产品工程设计人员 | 1472h | 14,720 | 14,720 |
| 40 | 1.3.3.7 | 重新设计生产过程(如果必要) |  | 10d | 2023-09-20 | 2023-10-03 | 39 | 2023-09-20 | 2023-10-03 | 10d | 0d |  | 产品工程设计人员; 加工工程师 | 160h | 1,600 | 1,600 |
| 41 | 1.3.3.8 | 修改原型生产过程 |  | 15d | 2023-10-04 | 2023-10-24 | 40 | 2023-10-04 | 2023-10-24 | 15d | 0d |  | 加工工程师 | 120h | 1,200 | 1,200 |
| 42 | 1.3.3.9 | 制定用户产品测试计划 |  | 5d | 2023-11-29 | 2023-12-05 | 41 | 2023-11-29 | 2023-12-05 | 5d | 0d |  | 项目经理 | 40h | 1,200 | 1,200 |
| 43 | 1.3.3.10 | 生产用于用户测试的产品 |  | 25d | 2023-10-25 | 2023-11-28 | 41 | 2023-10-25 | 2023-11-28 | 25d | 5d | 0d | 产品工程设计人员; 市场人员; 项目经理 | 204h | 6,040 | 6,040 |
| 44 | 1.3.3.11 | 审查初步的生产过程 |  | 10d | 2023-11-29 | 2023-12-12 | 43 | 2023-11-29 | 2023-12-12 | 10d | 15d |  | 加工工程师; 制造工程师 | 160h | 1,600 | 1,600 |
| 45 | 1.3.3.12 | 展开用户对原型产品的测试 |  | 20d | 2023-12-06 | 2024-01-02 | 43, 42 | 2023-12-06 | 2024-01-02 | 20d | 0d |  | 产品工程设计人员; 项目经理; 用户 | 164h | 80 | 80 |
| 46 | 1.3.4 | **概念评估** |  | 87.25d | 2024-01-03 | 2024-05-03 |  | 2024-01-03 | 2024-05-03 | 87.25d | 0d |  |  | 1320h | 18,160 | 18,160 |
| 47 | 1.3.4.1 | 进行市场/技术审查 |  | 2d | 2024-01-03 | 2024-01-04 | 45, 44 | 2024-01-03 | 2024-01-04 | 2d | 0d |  | 管理人员; 产品工程设计人员; 市场人员 | 20h | 200 | 200 |
| 48 | 1.3.4.2 | 准备初步的生产设计 |  | 20d | 2024-01-05 | 2024-02-01 | 47 | 2024-01-05 | 2024-02-01 | 20d | 0d |  | 产品工程设计人员 | 160h | 1,600 | 1,600 |
| 49 | 1.3.4.3 | 评估可供选择的外包生产方案 |  | 10d | 2024-02-02 | 2024-02-15 | 48 | 2024-02-02 | 2024-02-15 | 10d | 612.25d |  | 法律人员; 加工工程师 | 160h | 2,400 | 2,400 |
| 50 | 1.3.4.4 | 审查法律和专利方面的问题 |  | 10d | 2024-01-05 | 2024-01-18 | 47, 38 | 2024-01-05 | 2024-01-18 | 10d | 65.25d | 65d | 管理人员; 法律人员 | 160h | 2,400 | 2,400 |
| 51 | 1.3.4.5 | 审查环境问题 |  | 10d | 2024-03-22 | 2024-04-04 | 48 | 2024-03-22 | 2024-04-04 | 10d | 0d |  | 产品工程设计人员 | 80h | 800 | 800 |
| 52 | 1.3.4.6 | 审查产品安全性 |  | 30d | 2024-01-05 | 2024-02-22 | 47 | 2024-01-05 | 2024-02-22 | 30d | 30d |  | 产品工程设计人员; 安全人员 | 240h | 2,400 | 2,400 |
| 53 | 1.3.4.7 | 评估/预测产品生命周期 |  | 30d | 2024-02-02 | 2024-03-21 | 48 | 2024-02-02 | 2024-03-21 | 30d | 10d |  | 产品工程设计人员; 项目经理 | 240h | 4,800 | 4,800 |
| 54 | 1.3.4.8 | 更新财政分析 |  | 10d | 2024-04-05 | 2024-04-18 | 53, 52, 51, 57 | 2024-04-05 | 2024-04-18 | 10d | 0d |  | 会计 | 80h | 800 | 800 |
| 55 | 1.3.4.9 | 风险分析 |  | 10d | 2024-04-19 | 2024-05-02 | 50, 54, 52 | 2024-04-19 | 2024-05-02 | 10d | 0.25d |  | 产品工程设计人员 | 80h | 800 | 800 |
| 56 | 1.3.4.10 | 审查初步的研究标准 |  | 2.25d | 2024-04-19 | 2024-05-03 | 54 | 2024-04-19 | 2024-05-03 | 2.25d | 0d |  | 管理人员; 产品工程设计人员; 法律人员 | 20h | 360 | 360 |
| 57 | 1.3.4.11 | 制定试生产阶段计划 |  | 10d | 2024-01-05 | 2024-02-29 | 48SS | 2024-01-05 | 2024-02-29 | 10d | 25d |  | 产品工程设计人员; 项目经理 | 80h | 1,600 | 1,600 |
| 58 | 1.3.5 | 进行开发阶段审查 |  | 2d | 2024-05-03 | 2024-05-07 | 55, 56, 57 | 2024-05-03 | 2024-05-07 | 2d | 0d |  | 产品工程设计人员; 项目经理; 加工工程师 | 20h | 240 | 240 |
| 59 | 1.3.6 | 决策点: 是否进入试生产阶段 | milestone | 0d | 2024-05-07 | 2024-05-07 | 58 | 2024-05-07 | 2024-05-07 | 0d | 0d |  | 管理人员; 项目经理 |  |  |  |

| ID | WBS | Task | Duration | Start | Finish | Predecessors | Baseline start | Baseline finish | Baseline duration | Total slack | Resources | Work | Cost | Baseline cost |
| --- | --- | --- | --- | --- | --- | --- | --- | --- | --- | --- | --- | --- | --- | --- |
| 60 | 1.4 | **试生产阶段** | 185d | 2024-05-07 | 2025-01-21 |  | 2024-05-07 | 2025-01-21 | 185d | 0d |  | 1948h | 27,560 | 27,560 |
| 61 | 1.4.1 | 分配试生产阶段的资源 | 1d | 2024-05-07 | 2024-05-08 | 58, 59 | 2024-05-07 | 2024-05-08 | 1d | 0d | 管理人员; 项目经理 | 16h | 320 | 320 |
| 62 | 1.4.2 | 确保用户能参予商品化试验阶段的工作 | 5d | 2024-05-08 | 2024-05-15 | 61 | 2024-05-08 | 2024-05-15 | 5d | 0d | 法律人员; 项目经理 | 80h | 2,000 | 2,000 |
| 63 | 1.4.3 | **试生产** | 125d | 2024-05-15 | 2024-11-06 |  | 2024-05-15 | 2024-11-06 | 125d | 0d |  | 1160h | 15,600 | 15,600 |
| 64 | 1.4.3.1 | 排定日程/保留试生产所需的设施 | 5d | 2024-05-15 | 2024-05-22 | 62 | 2024-05-15 | 2024-05-22 | 5d | 0d | 项目经理 | 40h | 1,200 | 1,200 |
| 65 | 1.4.3.2 | 解决原材料和成品的后勤问题 | 10d | 2024-05-22 | 2024-06-05 | 64 | 2024-05-22 | 2024-06-05 | 10d | 0d | 产品工程设计人员; 项目经理 | 80h | 1,600 | 1,600 |
| 66 | 1.4.3.3 | 复查试生产计划和要求 | 10d | 2024-05-15 | 2024-05-29 | 62 | 2024-05-15 | 2024-05-29 | 10d | 5d | 产品工程设计人员; 项目经理 | 80h | 1,600 | 1,600 |
| 67 | 1.4.3.4 | 开始试生产 | 30d | 2024-06-05 | 2024-07-17 | 65, 66 | 2024-06-05 | 2024-07-17 | 30d | 0d | 产品工程设计人员 | 240h | 2,400 | 2,400 |
| 68 | 1.4.3.5 | 监控用户试用情况 | 20d | 2024-07-17 | 2024-08-14 | 67SS | 2024-07-17 | 2024-08-14 | 20d | 0d | 产品工程设计人员 | 160h | 1,600 | 1,600 |
| 69 | 1.4.3.6 | 审查初步试生产的结果 | 10d | 2024-08-14 | 2024-08-28 | 68 | 2024-08-14 | 2024-08-28 | 10d | 0d | 产品工程设计人员; 项目经理 | 160h | 3,200 | 3,200 |
| 70 | 1.4.3.7 | 继续试生产 | 30d | 2024-08-28 | 2024-10-09 | 69 | 2024-08-28 | 2024-10-09 | 30d | 0d | 产品工程设计人员 | 240h | 2,400 | 2,400 |
| 71 | 1.4.3.8 | 完成对用户试用情况的监控 | 20d | 2024-10-09 | 2024-11-06 | 70SS | 2024-10-09 | 2024-11-06 | 20d | 0d | 产品工程设计人员 | 160h | 1,600 | 1,600 |
| 72 | 1.4.4 | **试验结果分析** | 54d | 2024-11-06 | 2025-01-21 |  | 2024-11-06 | 2025-01-21 | 54d | 0d |  | 692h | 9,640 | 9,640 |
| 73 | 1.4.4.1 | 确认销售和营销策略 | 5d | 2024-11-06 | 2024-11-13 | 71 | 2024-11-06 | 2024-11-13 | 5d | 0d | 市场人员; 项目经理 | 80h | 1,600 | 1,600 |
| 74 | 1.4.4.2 | 确认产品的安全性 | 10d | 2024-11-06 | 2024-11-20 | 73SS | 2024-11-06 | 2024-11-20 | 10d | 0d | 项目经理; 安全人员 | 80h | 1,600 | 1,600 |
| 75 | 1.4.4.3 | 重新评估生产过程 | 15d | 2024-11-20 | 2024-12-11 | 73, 74 | 2024-11-20 | 2024-12-11 | 15d | 0d | 加工工程师 | 120h | 1,200 | 1,200 |
| 76 | 1.4.4.4 | 制定商品化计划 | 15d | 2024-12-11 | 2025-01-01 | 75 | 2024-12-11 | 2025-01-01 | 15d | 0d | 产品工程设计人员; 市场人员 | 240h | 2,400 | 2,400 |
| 77 | 1.4.4.5 | 复查财务状况 | 5d | 2025-01-01 | 2025-01-08 | 76 | 2025-01-01 | 2025-01-08 | 5d | 5d | 会计 | 40h | 400 | 400 |
| 78 | 1.4.4.6 | 复查专利和法律问题 | 10d | 2025-01-01 | 2025-01-15 | 76 | 2025-01-01 | 2025-01-15 | 10d | 0d | 法律人员 | 80h | 1,600 | 1,600 |
| 79 | 1.4.4.7 | 指定商品化过程的领导职责和资源 | 2d | 2025-01-15 | 2025-01-17 | 77, 78 | 2025-01-15 | 2025-01-17 | 2d | 0d | 管理人员; 项目经理 | 32h | 640 | 640 |
| 80 | 1.4.4.8 | 对试生产阶段进行审查并做出商品化决策 | 2d | 2025-01-17 | 2025-01-21 | 79 | 2025-01-17 | 2025-01-21 | 2d | 0d | 管理人员; 产品工程设计人员; 市场人员; 加工工程师 | 20h | 200 | 200 |
| 81 | 1.5 | **商品化阶段** | 210d | 2025-01-21 | 2025-11-11 |  | 2025-01-21 | 2025-11-11 | 210d | 0d |  | 3168h | 40,800 | 40,800 |
| 82 | 1.5.1 | **产品的生产和监控** | 168d | 2025-01-21 | 2025-09-12 |  | 2025-01-21 | 2025-09-12 | 168d | 0d |  | 2608h | 33,280 | 33,280 |
| 83 | 1.5.1.1 | 确认产品规范 | 3d | 2025-01-21 | 2025-01-24 | 80 | 2025-01-21 | 2025-01-24 | 3d | 0d | 产品工程设计人员; 制造工程师 | 48h | 480 | 480 |
| 84 | 1.5.1.2 | 确认用户对规范的接受程度并参与试验 | 10d | 2025-01-24 | 2025-02-07 | 83 | 2025-01-24 | 2025-02-07 | 10d | 0d | 产品工程设计人员; 项目经理 | 160h | 3,200 | 3,200 |
| 85 | 1.5.1.3 | 确定生产过程的要求 | 10d | 2025-02-07 | 2025-02-21 | 84 | 2025-02-07 | 2025-02-21 | 10d | 0d | 加工工程师; 制造工程师 | 160h | 1,600 | 1,600 |
| 86 | 1.5.1.4 | 设计和定购新的设备 | 30d | 2025-02-21 | 2025-04-04 | 85 | 2025-02-21 | 2025-04-04 | 30d | 0d | 产品工程设计人员; 采购人员 | 480h | 4,800 | 4,800 |
| 87 | 1.5.1.5 | 安装并测试新的设备或改装的设备 | 30d | 2025-04-04 | 2025-05-16 | 86 | 2025-04-04 | 2025-05-16 | 30d | 0d | 产品工程设计人员; 制造工程师 | 480h | 4,800 | 4,800 |
| 88 | 1.5.1.6 | 确认生产能力 | 10d | 2025-05-16 | 2025-05-30 | 87 | 2025-05-16 | 2025-05-30 | 10d | 0d | 制造工程师 | 80h | 800 | 800 |
| 89 | 1.5.1.7 | 制定并审查生产试验计划(解决后勤问题) | 5d | 2025-05-30 | 2025-06-06 | 88 | 2025-05-30 | 2025-06-06 | 5d | 0d | 产品工程设计人员; 项目经理 | 80h | 1,600 | 1,600 |
| 90 | 1.5.1.8 | 开始商业产量的生产 | 40d | 2025-06-06 | 2025-08-01 | 89 | 2025-06-06 | 2025-08-01 | 40d | 0d | 产品工程设计人员; 制造工程师 | 640h | 6,400 | 6,400 |
| 91 | 1.5.1.9 | 监控用户接受程度试验 | 30d | 2025-08-01 | 2025-09-12 | 90 | 2025-08-01 | 2025-09-12 | 30d | 15d | 产品工程设计人员; 项目经理 | 480h | 9,600 | 9,600 |

| ID | WBS | Task | Duration | Start | Finish | Predecessors | Baseline start | Baseline finish | Baseline duration | Total slack | Free slack | Resources | Work | Cost | Baseline cost |
| --- | --- | --- | --- | --- | --- | --- | --- | --- | --- | --- | --- | --- | --- | --- | --- |
| 92 | 1.5.2 | **商品化分析** | 42d | 2025-09-12 | 2025-11-11 |  | 2025-09-12 | 2025-11-11 | 42d | 0d |  |  | 560h | 7,520 | 7,520 |
| 93 | 1.5.2.1 | 进行内部产品测试 | 15d | 2025-09-12 | 2025-10-03 | 90 | 2025-09-12 | 2025-10-03 | 15d | 0d |  | 产品工程设计人员 | 120h | 1,200 | 1,200 |
| 94 | 1.5.2.2 | 审查生产业绩 | 10d | 2025-10-03 | 2025-10-17 | 91, 93 | 2025-10-03 | 2025-10-17 | 10d | 0d |  | 管理人员; 产品工程设计人员; 项目经理 | 84h | 2,440 | 2,440 |
| 95 | 1.5.2.3 | 确定长期生产需求 | 15d | 2025-10-17 | 2025-11-07 | 94 | 2025-10-17 | 2025-11-07 | 15d | 0d |  | 加工工程师; 制造工程师 | 240h | 2,400 | 2,400 |
| 96 | 1.5.2.4 | 重新计算产品经济效益 | 10d | 2025-10-17 | 2025-10-31 | 94 | 2025-10-17 | 2025-10-31 | 10d | 5d |  | 产品工程设计人员; 市场人员; 会计 | 84h | 840 | 840 |
| 97 | 1.5.2.5 | 确认继续进行商品化的决策 | 2d | 2025-11-07 | 2025-11-11 | 96, 95 | 2025-11-07 | 2025-11-11 | 2d | 0d |  | 管理人员; 项目经理 | 32h | 640 | 640 |
| 98 | 1.6 | **商品化完成后的回顾** | 160d | 2025-11-11 | 2026-06-23 |  | 2025-11-11 | 2026-06-23 | 160d | 0d |  |  | 3284h | 48,840 | 48,840 |
| 99 | 1.6.1 | 确定产品是否达到用户对成本/性能比的期望 | 60d | 2025-11-11 | 2026-02-03 | 97 | 2025-11-11 | 2026-02-03 | 60d | 0d |  | 管理人员; 项目经理 | 960h | 19,200 | 19,200 |
| 100 | 1.6.2 | 确定销售是否达到了预期值 | 120d | 2025-11-11 | 2026-04-28 | 99SS | 2025-11-11 | 2026-04-28 | 120d | 10d | 0d | 管理人员; 市场人员 | 960h | 9,600 | 9,600 |
| 101 | 1.6.3 | 确定产品在竞争对手做出反应的情况下是否保持了市场份额 | 30d | 2026-04-28 | 2026-06-09 | 100 | 2026-04-28 | 2026-06-09 | 30d | 10d |  | 管理人员; 市场人员 | 480h | 4,800 | 4,800 |
| 102 | 1.6.4 | 评估生产过程的稳定性和成本效益 | 40d | 2026-02-03 | 2026-03-31 | 99 | 2026-02-03 | 2026-03-31 | 40d | 0d |  | 项目经理; 制造工程师 | 640h | 12,800 | 12,800 |
| 103 | 1.6.5 | 确定当前的经济状况是否与预期的经济状况相一致 | 15d | 2026-03-31 | 2026-04-21 | 102 | 2026-03-31 | 2026-04-21 | 15d | 0d |  | 市场人员 | 120h | 1,200 | 1,200 |
| 104 | 1.6.6 | 评估扩大产品和产品线的可能性 | 15d | 2026-04-21 | 2026-06-23 | 103 | 2026-04-21 | 2026-06-23 | 15d | 0d |  | 管理人员; 产品工程设计人员; 市场人员 | 124h | 1,240 | 1,240 |
