# 三级项目报告-20002060331-安诣暄

Schedule from MS Project, 2022-06-29 to 2023-02-20, costs in ¥, A marks actual dates.

## Calendars

- 标准: Mon-Fri 08:00-12:00, 13:00-17:00; Sat-Sun off.

## Resources

| Resource | Group | Rate |
| --- | --- | --- |
| 项目经理 | 项目领导小组 | 72.12 |
| 系统架构师 | 技术部 | 57.69 |
| 系统设计师 | 技术部 | 48.08 |
| 程序员 | 技术部 | 43.75 |
| 测试人员 | 技术部 | 25 |

## Schedule

| ID | WBS | Task | Type | Duration | Start | Finish | Predecessors | Complete | Baseline start | Baseline finish | Baseline duration | Resources | Work | Actual work | Cost | Baseline cost | Actual cost |
| --- | --- | --- | --- | --- | --- | --- | --- | --- | --- | --- | --- | --- | --- | --- | --- | --- | --- |
| 1 | 1 | **项目范围规划** |  | 12.5d | 2022-06-29 A | 2022-07-15 A |  | 100% | 2022-06-29 | 2022-07-15 | 12.5d |  | 47h | 47h | 432.69 | 432.69 | 432.69 |
| 2 | 1.1 | 确定项目范围 |  | 1d | 2022-06-29 A | 2022-06-29 A |  | 100% | 2022-06-29 | 2022-06-29 | 1d |  | 4h | 4h |  |  |  |
| 3 | 1.2 | 制定项目范围管理计划 |  | 5d | 2022-06-30 A | 2022-07-06 A | 2 | 100% | 2022-06-30 | 2022-07-06 | 5d |  | 8h | 8h |  |  |  |
| 4 | 1.3 | 初步分析范围管理计划 |  | 1d | 2022-07-07 A | 2022-07-07 A | 3 | 100% | 2022-07-07 | 2022-07-07 | 1d |  | 4h | 4h |  |  |  |
| 5 | 1.4 | 获得项目所需资金 |  | 1d | 2022-07-08 A | 2022-07-08 A | 4 | 100% | 2022-07-08 | 2022-07-08 | 1d |  | 8h | 8h |  |  |  |
| 6 | 1.5 | 项目工作分解结构 |  | 0.5d | 2022-07-11 A | 2022-07-11 A | 5 | 100% | 2022-07-11 | 2022-07-11 | 0.5d |  | 4h | 4h |  |  |  |
| 7 | 1.6 | 项目范围核实与控制 |  | 2d | 2022-07-11 A | 2022-07-13 A | 6 | 100% | 2022-07-11 | 2022-07-13 | 2d | 项目经理 [37.5%] | 6h | 6h | 432.69 | 432.69 | 432.69 |
| 8 | 1.7 | 定义预备资源 |  | 1d | 2022-07-13 A | 2022-07-14 A | 7 | 100% | 2022-07-13 | 2022-07-14 | 1d |  | 8h | 8h |  |  |  |
| 9 | 1.8 | 获得核心资源 |  | 0.5d | 2022-07-14 A | 2022-07-14 A | 8 | 100% | 2022-07-14 | 2022-07-14 | 0.5d |  | 1h | 1h |  |  |  |
| 10 | 1.9 | 项目范围规划完成 | milestone | 0d | 2022-07-14 A | 2022-07-14 A | 9 | 100% | 2022-07-14 | 2022-07-14 | 0d |  |  |  |  |  |  |
| 11 | 1.10 | 项目范围检查 |  | 0.5d | 2022-07-15 A | 2022-07-15 A | 10 | 100% | 2022-07-15 | 2022-07-15 | 0.5d |  | 4h | 4h |  |  |  |
| 12 | 2 | **分析软件需求** |  | 29.24d | 2022-07-15 A | 2022-08-25 A |  | 100% | 2022-07-15 | 2022-08-25 | 29.24d |  | 91.94h | 91.94h | 3,868.04 | 3,868.03 | 3,868.04 |
| 13 | 2.1 | 可行性分析 |  | 2d | 2022-07-15 A | 2022-07-19 A | 11 | 100% | 2022-07-15 | 2022-07-19 | 2d | 系统设计师 [31.2%] | 5h | 5h | 240.38 | 240.38 | 240.38 |
| 14 | 2.2 | 明确需求分析任务 |  | 2.02d | 2022-07-19 A | 2022-07-21 A | 13 | 100% | 2022-07-19 | 2022-07-21 | 2.02d | 系统设计师 | 16.13h | 16.13h | 775.4 | 775.4 | 775.4 |
| 15 | 2.3 | 建立系统模型 |  | 3.23d | 2022-07-21 A | 2022-07-26 A | 14 | 100% | 2022-07-21 | 2022-07-26 | 3.23d | 系统设计师 | 25.81h | 25.81h | 1,240.71 | 1,240.71 | 1,240.71 |
| 16 | 2.4 | 写出需求规格说明 |  | 1d | 2022-07-26 A | 2022-07-27 A | 15 | 100% | 2022-07-26 | 2022-07-27 | 1d | 系统设计师 [50%] | 4h | 4h | 192.31 | 192.31 | 192.31 |
| 17 | 2.5 | 修正开发计划 |  | 0.5d | 2022-07-27 A | 2022-07-28 A | 16 | 100% | 2022-07-27 | 2022-07-28 | 0.5d | 系统架构师 [75%] | 3h | 3h | 173.08 | 173.08 | 173.08 |
| 18 | 2.6 | 制定初步的测试计划 |  | 1d | 2022-07-28 A | 2022-07-29 A | 17 | 100% | 2022-07-28 | 2022-07-29 | 1d | 测试人员 [87.5%] | 7h | 7h | 175 | 175 | 175 |
| 19 | 2.7 | 编写初步的用户手册 |  | 0.5d | 2022-07-29 A | 2022-07-29 A | 18 | 100% | 2022-07-29 | 2022-07-29 | 0.5d | 系统架构师 | 4h | 4h | 230.77 | 230.77 | 230.77 |
| 20 | 2.8 | 编写数据要求说明书 |  | 1d | 2022-07-29 A | 2022-08-01 A | 19 | 100% | 2022-07-29 | 2022-08-01 | 1d | 系统架构师 [75%] | 6h | 6h | 346.15 | 346.15 | 346.15 |
| 21 | 2.9 | 复审 |  | 2d | 2022-08-01 A | 2022-08-03 A | 20 | 100% | 2022-08-01 | 2022-08-03 | 2d | 项目经理 [6.2%] | 1h | 1h | 72.12 | 72.12 | 72.12 |
| 22 | 2.10 | 起草初步的软件规范 |  | 1d | 2022-08-03 A | 2022-08-04 A | 21 | 100% | 2022-08-03 | 2022-08-04 | 1d | 程序员 [75%] | 6h | 6h | 262.5 | 262.5 | 262.5 |
| 23 | 2.11 | 制定初步预算 |  | 2d | 2022-08-04 A | 2022-08-08 A | 22 | 100% | 2022-08-04 | 2022-08-08 | 2d |  | 5h | 5h |  |  |  |
| 24 | 2.12 | 工作组共同审阅软件规范及预算 |  | 4d | 2022-08-08 A | 2022-08-12 A | 23 | 100% | 2022-08-08 | 2022-08-12 | 4d |  | 4h | 4h |  |  |  |
| 25 | 2.13 | 根据反馈修改软件规范 |  | 1d | 2022-08-12 A | 2022-08-15 A | 24 | 100% | 2022-08-12 | 2022-08-15 | 1d | 程序员 [25%] | 2h | 2h | 87.5 | 87.5 | 87.5 |
| 26 | 2.14 | 确定交付期限 |  | 3d | 2022-08-15 A | 2022-08-18 A | 25 | 100% | 2022-08-15 | 2022-08-18 | 3d |  | 1h | 1h |  |  |  |
| 27 | 2.15 | 获得开展后续工作的批准 |  | 4d | 2022-08-18 A | 2022-08-24 A | 26 | 100% | 2022-08-18 | 2022-08-24 | 4d | 项目经理 [3.1%] | 1h | 1h | 72.12 | 72.12 | 72.12 |
| 28 | 2.16 | 获得所需资源 |  | 1d | 2022-08-24 A | 2022-08-25 A | 27 | 100% | 2022-08-24 | 2022-08-25 | 1d |  | 1h | 1h |  |  |  |
| 29 | 2.17 | 分析工作完成 | milestone | 0d | 2022-08-25 A | 2022-08-25 A | 28 | 100% | 2022-08-25 | 2022-08-25 | 0d |  |  |  |  |  |  |

| ID | WBS | Task | Type | Duration | Start | Finish | Predecessors | Complete | Remaining | Baseline start | Baseline finish | Baseline duration | Total slack | Resources | Work | Actual work | Cost | Baseline cost | Actual cost |
| --- | --- | --- | --- | --- | --- | --- | --- | --- | --- | --- | --- | --- | --- | --- | --- | --- | --- | --- | --- |
| 30 | 3 | **设计** |  | 18d | 2022-08-25 A | 2022-09-20 A |  | 100% |  | 2022-08-25 | 2022-09-20 | 18d |  |  | 16h | 16h | 640.87 | 640.87 | 640.87 |
| 31 | 3.1 | 审阅初步软件规范 |  | 2d | 2022-08-25 A | 2022-08-29 A | 29 | 100% |  | 2022-08-25 | 2022-08-29 | 2d |  |  |  |  |  |  |  |
| 32 | 3.2 | 制定功能规范 |  | 5d | 2022-08-29 A | 2022-09-05 A | 31 | 100% |  | 2022-08-29 | 2022-09-05 | 5d |  | 程序员 [12.5%] | 5h | 5h | 218.75 | 218.75 | 218.75 |
| 33 | 3.3 | 根据功能规范开发原型 |  | 4d | 2022-09-05 A | 2022-09-09 A | 32 | 100% |  | 2022-09-05 | 2022-09-09 | 4d |  | 程序员 [12.5%] | 4h | 4h | 175 | 175 | 175 |
| 34 | 3.4 | 审阅功能规范 |  | 2d | 2022-09-09 A | 2022-09-13 A | 33 | 100% |  | 2022-09-09 | 2022-09-13 | 2d |  |  | 2h | 2h |  |  |  |
| 35 | 3.5 | 根据反馈修改功能规范 |  | 1d | 2022-09-13 A | 2022-09-14 A | 34 | 100% |  | 2022-09-13 | 2022-09-14 | 1d |  | 程序员 [50%] | 4h | 4h | 175 | 175 | 175 |
| 36 | 3.6 | 获得开展后续工作的批准 |  | 4d | 2022-09-14 A | 2022-09-20 A | 35 | 100% |  | 2022-09-14 | 2022-09-20 | 4d |  | 项目经理 [3.1%] | 1h | 1h | 72.12 | 72.12 | 72.12 |
| 37 | 3.7 | 完成设计工作 | milestone | 0d | 2022-09-20 A | 2022-09-20 A | 36 | 100% |  | 2022-09-20 | 2022-09-20 | 0d |  |  |  |  |  |  |  |
| 38 | 4 | **开发** |  | 33d | 2022-09-20 A | 2022-11-04 A |  | 100% |  | 2022-09-20 | 2022-11-04 | 33d |  |  | 22h | 22h | 1,019.23 | 1,019.23 | 1,019.23 |
| 39 | 4.1 | 审阅功能规范 |  | 1d | 2022-09-20 A | 2022-09-21 A | 37 | 100% |  | 2022-09-20 | 2022-09-21 | 1d |  |  |  |  |  |  |  |
| 40 | 4.2 | 确定模块化分层设计参数 |  | 1d | 2022-09-21 A | 2022-09-22 A | 39 | 100% |  | 2022-09-21 | 2022-09-22 | 1d |  | 程序员 [75%] | 6h | 6h | 262.5 | 262.5 | 262.5 |
| 41 | 4.3 | 分派任务给开发人员 |  | 1d | 2022-09-22 A | 2022-09-23 A | 40 | 100% |  | 2022-09-22 | 2022-09-23 | 1d |  | 项目经理 [25%] | 2h | 2h | 144.23 | 144.23 | 144.23 |
| 42 | 4.4 | 编写代码 |  | 15d | 2022-09-23 A | 2022-10-14 A | 41 | 100% |  | 2022-09-23 | 2022-10-14 | 15d |  | 程序员 [6.7%] | 8h | 8h | 350 | 350 | 350 |
| 43 | 4.5 | 开发人员初步测试 |  | 15d | 2022-10-14 A | 2022-11-04 A | 42 | 100% |  | 2022-10-14 | 2022-11-04 | 15d |  | 程序员 [5%] | 6h | 6h | 262.5 | 262.5 | 262.5 |
| 44 | 4.6 | 完成开发工作 | milestone | 0d | 2022-11-04 A | 2022-11-04 A | 43 | 100% |  | 2022-11-04 | 2022-11-04 | 0d |  |  |  |  |  |  |  |
| 45 | 5 | **测试** |  | 39d | 2022-11-04 A | 2022-12-29 |  | 60% | 15.74d | 2022-11-04 | 2022-12-29 | 39d | 0d |  | 35h | 16.52h | 750 | 950 | 110.09 |
| 46 | 5.1 | 根据产品规范制定单元测试计划 |  | 4d | 2022-11-04 A | 2022-11-10 A | 44 | 100% |  | 2022-11-04 | 2022-11-10 | 4d |  | 测试人员 [6.2%] | 2h | 2h |  | 50 |  |
| 47 | 5.2 | 根据产品规范制定整体测试计划 |  | 4d | 2022-11-10 A | 2022-11-16 A | 46 | 100% |  | 2022-11-10 | 2022-11-16 | 4d |  | 测试人员 [6.2%] | 2h | 2h |  | 50 |  |
| 48 | 5.3 | **单元测试** |  | 19d | 2022-11-16 A | 2022-12-13 |  | 80% | 3.74d | 2022-11-16 | 2022-12-13 | 19d | 0d |  | 20h | 12.52h | 362.5 | 462.5 | 110.09 |
| 49 | 5.3.1 | 审阅模块化代码 |  | 5d | 2022-11-16 A | 2022-11-23 A | 47 | 100% |  | 2022-11-16 | 2022-11-23 | 5d |  |  | 3h | 3h |  |  |  |
| 50 | 5.3.2 | 设计组件行为 |  | 4d | 2022-11-23 A | 2022-11-29 A | 49 | 100% |  | 2022-11-23 | 2022-11-29 | 4d |  |  | 3h | 3h |  |  |  |
| 51 | 5.3.3 | 测试组建模块是否符合产品规范 |  | 2d | 2022-11-29 A | 2022-12-01 A | 50 | 100% |  | 2022-11-29 | 2022-12-01 | 2d |  | 测试人员 [12.5%] | 2h | 2h |  | 50 |  |
| 52 | 5.3.4 | 找出不符合产品规范的异常情况 |  | 3d | 2022-12-01 A | 2022-12-06 A | 51 | 100% |  | 2022-12-01 | 2022-12-06 | 3d |  | 测试人员 [8.3%] | 2h | 2h |  | 50 |  |
| 53 | 5.3.5 | 修改代码 |  | 3d | 2022-12-06 A | 2022-12-09 | 52 | 42% | 1.74d | 2022-12-06 | 2022-12-09 | 3d | 0d | 程序员 [25%] | 6h | 2.52h | 262.5 | 262.5 | 110.09 |
| 54 | 5.3.6 | 重新测试经过修改的代码 |  | 2d | 2022-12-09 | 2022-12-13 | 53 |  |  | 2022-12-09 | 2022-12-13 | 2d | 0d | 测试人员 [25%] | 4h |  | 100 | 100 |  |
| 55 | 5.3.7 | 单元测试完成 | milestone | 0d | 2022-12-13 | 2022-12-13 | 54 |  |  | 2022-12-13 | 2022-12-13 | 0d | 0d |  |  |  |  |  |  |

| ID | WBS | Task | Type | Duration | Start | Finish | Predecessors | Baseline start | Baseline finish | Baseline duration | Total slack | Resources | Work | Cost | Baseline cost |
| --- | --- | --- | --- | --- | --- | --- | --- | --- | --- | --- | --- | --- | --- | --- | --- |
| 56 | 5.4 | **整体测试** |  | 12d | 2022-12-13 | 2022-12-29 |  | 2022-12-13 | 2022-12-29 | 12d | 0d |  | 11h | 387.5 | 387.5 |
| 57 | 5.4.1 | 测试模块集成情况 |  | 5d | 2022-12-13 | 2022-12-20 | 55 | 2022-12-13 | 2022-12-20 | 5d | 0d | 测试人员 [5%] | 2h | 50 | 50 |
| 58 | 5.4.2 | 找出不符合规范的异常情况 |  | 2d | 2022-12-20 | 2022-12-22 | 57 | 2022-12-20 | 2022-12-22 | 2d | 0d | 测试人员 [12.5%] | 2h | 50 | 50 |
| 59 | 5.4.3 | 修改代码 |  | 3d | 2022-12-22 | 2022-12-27 | 58 | 2022-12-22 | 2022-12-27 | 3d | 0d | 程序员 [25%] | 6h | 262.5 | 262.5 |
| 60 | 5.4.4 | 重新测试经过修改的代码 |  | 2d | 2022-12-27 | 2022-12-29 | 59 | 2022-12-27 | 2022-12-29 | 2d | 0d | 测试人员 [6.2%] | 1h | 25 | 25 |
| 61 | 5.4.5 | 整体测试完成 | milestone | 0d | 2022-12-29 | 2022-12-29 | 60 | 2022-12-29 | 2022-12-29 | 0d | 0d |  |  |  |  |
| 62 | 6 | **试生产** |  | 19d | 2022-12-29 | 2023-01-25 |  | 2022-12-29 | 2023-01-25 | 19d | 0d |  | 14h | 169.23 | 169.23 |
| 63 | 6.1 | 研究论证 |  | 1d | 2022-12-29 | 2022-12-30 | 61 | 2022-12-29 | 2022-12-30 | 1d | 0d |  | 4h |  |  |
| 64 | 6.2 | 确定测试群体 |  | 1d | 2022-12-30 | 2023-01-02 | 63 | 2022-12-30 | 2023-01-02 | 1d | 0d | 测试人员 [12.5%] | 1h | 25 | 25 |
| 65 | 6.3 | 确定软件分发机制 |  | 1d | 2023-01-02 | 2023-01-03 | 64 | 2023-01-02 | 2023-01-03 | 1d | 0d |  | 2h |  |  |
| 66 | 6.4 | 安装部署软件 |  | 1d | 2023-01-03 | 2023-01-04 | 65 | 2023-01-03 | 2023-01-04 | 1d | 0d |  | 3h |  |  |
| 67 | 6.5 | 获得用户反馈 |  | 14d | 2023-01-04 | 2023-01-24 | 66 | 2023-01-04 | 2023-01-24 | 14d | 0d |  | 1h |  |  |
| 68 | 6.6 | 评估测试信息 |  | 1d | 2023-01-24 | 2023-01-25 | 67 | 2023-01-24 | 2023-01-25 | 1d | 0d | 系统设计师 [37.5%] | 3h | 144.23 | 144.23 |
| 69 | 6.7 | 试生产工作完成 | milestone | 0d | 2023-01-25 | 2023-01-25 | 68 | 2023-01-25 | 2023-01-25 | 0d | 0d |  |  |  |  |
| 70 | 7 | **部署** |  | 5d | 2023-01-25 | 2023-02-01 |  | 2023-01-25 | 2023-02-01 | 5d | 0d |  | 18h | 159.62 | 159.62 |
| 71 | 7.1 | 确定最终部署策略 |  | 1d | 2023-01-25 | 2023-01-26 | 69 | 2023-01-25 | 2023-01-26 | 1d | 0d |  | 3h |  |  |
| 72 | 7.2 | 确定部署方法 |  | 1d | 2023-01-26 | 2023-01-27 | 71 | 2023-01-26 | 2023-01-27 | 1d | 0d | 程序员 [25%] | 2h | 87.5 | 87.5 |
| 73 | 7.3 | 获得部署所需资源 |  | 1d | 2023-01-27 | 2023-01-30 | 72 | 2023-01-27 | 2023-01-30 | 1d | 0d | 项目经理 [12.5%] | 1h | 72.12 | 72.12 |
| 74 | 7.4 | 培训技术支持人员 |  | 1d | 2023-01-30 | 2023-01-31 | 73 | 2023-01-30 | 2023-01-31 | 1d | 0d |  | 5h |  |  |
| 75 | 7.5 | 部署软件 |  | 1d | 2023-01-31 | 2023-02-01 | 74 | 2023-01-31 | 2023-02-01 | 1d | 0d |  | 7h |  |  |
| 76 | 7.6 | 部署工作完成 | milestone | 0d | 2023-02-01 | 2023-02-01 | 75 | 2023-02-01 | 2023-02-01 | 0d | 0d |  |  |  |  |
| 77 | 8 | **实施工作结束后的回顾** |  | 4d | 2023-02-01 | 2023-02-07 |  | 2023-02-01 | 2023-02-07 | 4d | 0d |  | 14h | 504.81 | 504.81 |
| 78 | 8.1 | 经验教训记录存档 |  | 1d | 2023-02-01 | 2023-02-02 | 76 | 2023-02-01 | 2023-02-02 | 1d | 0d | 项目经理 [50%] | 4h | 288.46 | 288.46 |
| 79 | 8.2 | 分发给工作组成员 |  | 1d | 2023-02-02 | 2023-02-03 | 78 | 2023-02-02 | 2023-02-03 | 1d | 0d | 项目经理 [25%] | 2h | 144.23 | 144.23 |
| 80 | 8.3 | 建立软件维护小组 |  | 1d | 2023-02-03 | 2023-02-06 | 79 | 2023-02-03 | 2023-02-06 | 1d | 0d | 项目经理 [12.5%] | 1h | 72.12 | 72.12 |
| 81 | 8.4 | 工作汇报和总结 |  | 1d | 2023-02-06 | 2023-02-07 | 80 | 2023-02-06 | 2023-02-07 | 1d | 0d |  | 7h |  |  |
| 82 | 8.5 | 回顾完成 | milestone | 0d | 2023-02-07 | 2023-02-07 | 81 | 2023-02-07 | 2023-02-07 | 0d | 0d |  |  |  |  |

| ID | WBS | Task | Type | Duration | Start | Finish | Predecessors | Baseline start | Baseline finish | Baseline duration | Total slack | Resources | Work | Cost | Baseline cost |
| --- | --- | --- | --- | --- | --- | --- | --- | --- | --- | --- | --- | --- | --- | --- | --- |
| 83 | 9 | **发布阶段** |  | 9d | 2023-02-07 | 2023-02-20 |  | 2023-02-07 | 2023-02-20 | 9d | 0d |  | 27h | 587.02 | 587.02 |
| 84 | 9.1 | 发布准备 |  | 3d | 2023-02-07 | 2023-02-10 | 82 | 2023-02-07 | 2023-02-10 | 3d | 0d |  | 7h |  |  |
| 85 | 9.2 | 提交测试 |  | 1d | 2023-02-10 | 2023-02-13 | 84 | 2023-02-10 | 2023-02-13 | 1d | 0d | 测试人员 [12.5%] | 1h | 25 | 25 |
| 86 | 9.3 | 执行测试 |  | 0.5d | 2023-02-13 | 2023-02-14 | 85 | 2023-02-13 | 2023-02-14 | 0.5d | 0d | 测试人员 [75%] | 3h | 75 | 75 |
| 87 | 9.4 | 发布评审 |  | 0.5d | 2023-02-14 | 2023-02-14 | 86 | 2023-02-14 | 2023-02-14 | 0.5d | 0d |  | 4h |  |  |
| 88 | 9.5 | 源码及文档入库 |  | 0.5d | 2023-02-14 | 2023-02-15 | 87 | 2023-02-14 | 2023-02-15 | 0.5d | 0d | 程序员 [75%] | 3h | 131.25 | 131.25 |
| 89 | 9.6 | 程序打包 |  | 0.5d | 2023-02-15 | 2023-02-15 | 88 | 2023-02-15 | 2023-02-15 | 0.5d | 0d | 系统架构师 [50%] | 2h | 115.38 | 115.38 |
| 90 | 9.7 | 编写发布说明 |  | 1d | 2023-02-15 | 2023-02-16 | 89 | 2023-02-15 | 2023-02-16 | 1d | 0d | 系统设计师 [62.5%] | 5h | 240.38 | 240.38 |
| 91 | 9.8 | 软件发布 |  | 2d | 2023-02-16 | 2023-02-20 | 90 | 2023-02-16 | 2023-02-20 | 2d | 0d |  | 2h |  |  |
| 92 | 9.9 | 发布完成 | milestone | 0d | 2023-02-20 | 2023-02-20 | 91 | 2023-02-20 | 2023-02-20 | 0d | 0d |  |  |  |  |
